# CPROY_V1.0_2016

Schedule from MS Project, 2016-05-02 to 2016-07-21, A marks actual dates.

## Calendars

- Estándar: Mon-Fri 09:00-13:00, 15:00-19:00; Sat-Sun off.

## Schedule

| ID | WBS | Task | Type | Duration | Start | Finish | Predecessors | Complete | Remaining | Actual start | Actual finish | Total slack | Free slack | Constraint |
| --- | --- | --- | --- | --- | --- | --- | --- | --- | --- | --- | --- | --- | --- | --- |
| 1 | 1 | **PROYECTO BIO-ASSISTENS** |  | 58d | 2016-05-02 A | 2016-07-20 |  | 74% | 14.92d |  |  |  |  |  |
| 2 | 1.1 | **Gestión: PP-PMC** |  | 58d | 2016-05-02 A | 2016-07-20 |  | 76% | 14.05d |  |  |  |  |  |
| 3 | 1.1.1 | **Inicio** |  | 58d | 2016-05-02 A | 2016-07-20 |  | 50% | 29d |  |  |  |  |  |
| 4 | 1.1.1.1 | Revisión de la Metodología de Trabajo |  | 59d | 2016-05-02 A | 2016-07-21 |  | 50% | 29.5d |  |  | -1d | 0d |  |
| 5 | 1.1.2 | **Planificación** |  | 17d | 2016-05-02 A | 2016-05-24 A |  | 100% |  |  |  |  |  |  |
| 6 | 1.1.2.1 | **Plan de Proyecto** |  | 10d | 2016-05-05 | 2016-05-18 |  | 100% |  | 2016-05-02 | 2016-05-24 |  |  |  |
| 7 | 1.1.2.1.1 | **Elaboración de Plan de Proyecto** |  | 17d | 2016-05-02 A | 2016-05-24 A |  | 100% |  |  |  |  |  |  |
| 8 | 1.1.2.1.1.1 | Definir Nombre del Proyecto |  | 3d | 2016-05-02 A | 2016-05-04 A |  | 100% |  |  |  |  |  |  |
| 9 | 1.1.2.1.1.2 | Definir Objetivos de Proyecto |  | 1d | 2016-05-04 A | 2016-05-05 A | 8 | 100% |  |  |  |  |  |  |
| 10 | 1.1.2.1.1.3 | Elaboración de Cronograma Detallado | manual | 13d | 2016-05-06 A | 2016-05-24 A |  | 100% |  |  |  |  |  |  |
| 11 | 1.1.2.1.1.4 | Gestión de Comunicaciones |  | 1d | 2016-05-06 A | 2016-05-06 A |  | 100% |  |  |  |  |  | start no earlier than 2016-05-06 |
| 12 | 1.1.2.1.1.5 | Necesidades del Proyecto | manual | 2d | 2016-05-06 A | 2016-05-07 A |  | 100% |  |  |  |  |  |  |
| 13 | 1.1.2.1.1.6 | Identificación de Riesgos del Proyecto | manual | 6d | 2016-05-07 A | 2016-05-13 A |  | 100% |  |  |  |  |  |  |
| 14 | 1.1.2.1.1.7 | Elaborar Documento de Riesgos del Proyecto |  | 1d | 2016-05-14 A | 2016-05-16 A | 9 | 100% |  |  |  |  |  |  |
| 15 | 1.1.2.1.1.8 | Elaborar Documento Plan de Proyecto | manual | 10.7d | 2016-05-05 A | 2016-05-19 A |  | 100% |  |  |  |  |  | start no earlier than 2016-05-05 |
| 16 | 1.1.2.1.1.9 | Traspaso de Información | manual | 1d | 2016-05-24 A | 2016-05-24 A |  | 100% |  |  |  |  |  | start no earlier than 2016-05-24 |
| 17 | 1.1.2.1.2 | **Revisión Interna Plan de Proyecto** |  | 1d | 2016-05-14 A | 2016-05-14 A |  | 100% |  |  |  |  |  |  |
| 18 | 1.1.2.1.2.1 | Revisión de Plan de Proyecto por el equipo del Proyecto | manual | 1d | 2016-05-14 A | 2016-05-14 A |  | 100% |  |  |  |  |  |  |
| 19 | 1.1.2.1.2.2 | Ajustes al Plan de Proyecto | manual | 1d | 2016-05-14 A | 2016-05-14 A |  | 100% |  |  |  |  |  |  |
| 20 | 1.1.2.1.2.3 | Elaborar Acta de REVISION INTERNA del PLAN DE PROYECTO | manual | 1d | 2016-05-14 A | 2016-05-14 A |  | 100% |  |  |  |  |  |  |
| 21 | 1.1.2.1.2.4 | Traspaso de Información | manual | 1d | 2016-05-14 A | 2016-05-14 A |  | 100% |  |  |  |  |  |  |
| 22 | 1.1.2.1.3 | **Gestión de la Configuración** |  | 2d | 2016-05-05 A | 2016-05-06 A |  | 100% |  |  |  |  |  |  |
| 23 | 1.1.2.1.3.1 | Establecer Repositorio de Datos | manual | 2d | 2016-05-05 A | 2016-05-06 A |  | 100% |  |  |  |  |  |  |
| 24 | 1.1.2.1.3.2 | Asignar Gestor de Configuración | manual | 1d | 2016-05-06 A | 2016-05-06 A |  | 100% |  |  |  |  |  |  |
| 25 | 1.1.2.1.3.3 | Elaborar Solicitud de Accesos | manual | 1d | 2016-05-06 A | 2016-05-06 A |  | 100% |  |  |  |  |  |  |

Notes:
- 8: BIO-ASISTENS
- 9: Inciso 4 plan de proyecto
- 11: 9.2.4 de Plan de Proyecto
- 12: 6 de Plan de Proyecto
- 13: 9.1 Plan de Proyecto
- 14: REGRI_V0.1_2016.xlsx
- 15: PPROY_V0.1_2016

| ID | WBS | Task | Type | Duration | Start | Finish | Complete |
| --- | --- | --- | --- | --- | --- | --- | --- |
| 26 | 1.1.3 | **Asiganción, Ejecución, Seguimiento y Control** |  | 32.88d | 2016-05-05 A | 2016-06-20 A | 100% |
| 27 | 1.1.3.1 | **Desarrollo del Área de Proceso PP - PMC** |  | 10d | 2016-05-05 A | 2016-05-18 A | 100% |
| 28 | 1.1.3.1.1 | Elaborar Plantilla de Reunión Externa Mensual | manual | 1d | 2016-05-05 A | 2016-05-05 A | 100% |
| 29 | 1.1.3.1.2 | Elaborar Plantilla de Gestion de Riesgos | manual | 1d | 2016-05-06 A | 2016-05-06 A | 100% |
| 30 | 1.1.3.1.3 | Elaborar Plantilla de Informe de Avances Quincenales | manual | 1d | 2016-05-07 A | 2016-05-07 A | 100% |
| 31 | 1.1.3.1.4 | Elaborar Plantillas de Actas de Reunión Interna Quincenal | manual | 1d | 2016-05-09 A | 2016-05-09 A | 100% |
| 32 | 1.1.3.1.5 | Elaborar Formato de Aceptación de Entregables | manual | 1d | 2016-05-10 A | 2016-05-10 A | 100% |
| 33 | 1.1.3.1.6 | Elaborar Documento Gestión de Procesos PP-PMC | manual | 5d | 2016-05-11 A | 2016-05-17 A | 100% |
| 34 | 1.1.3.1.7 | Traspaso de Información | manual | 1d | 2016-05-18 A | 2016-05-18 A | 100% |
| 35 | 1.1.3.2 | **Desarrollo del Área de Proceso REQM** |  | 4d | 2016-06-09 A | 2016-06-14 A | 100% |
| 36 | 1.1.3.2.1 | Elaborar Formato de Solicitud a Cambios a Requerimientos | manual | 1d | 2016-06-09 A | 2016-06-09 A | 100% |
| 37 | 1.1.3.2.2 | Elaborar Formato de Matriz de Trazabilidad de Requerimientos | manual | 1d | 2016-06-09 A | 2016-06-09 A | 100% |
| 38 | 1.1.3.2.3 | Elaborar Formate de Acta de Solicitud Cambio de Requerimientos | manual | 1d | 2016-06-09 A | 2016-06-09 A | 100% |
| 39 | 1.1.3.2.4 | Elaborar Formato de Registro de Cambios a Requerimientos | manual | 1d | 2016-06-09 A | 2016-06-09 A | 100% |
| 40 | 1.1.3.2.5 | Elaborar Documento de Proceso de Gestión de cambios de Requerimientos | manual | 3d | 2016-06-09 A | 2016-06-13 A | 100% |
| 41 | 1.1.3.2.6 | Traspaso de Información | manual | 1d | 2016-06-14 A | 2016-06-14 A | 100% |
| 42 | 1.1.3.3 | **Desarrollo de Área de Proceso PPQA** |  | 4.12d | 2016-06-01 A | 2016-06-04 A | 100% |
| 43 | 1.1.3.3.1 | Elaborar Formato de CheckList de Aseguramiento de la Calidad | manual | 1d | 2016-06-01 A | 2016-06-01 A | 100% |
| 44 | 1.1.3.3.2 | Elaborar Herramienta de Gestión de Aseguramiento de la Calidad | manual | 1d | 2016-06-01 A | 2016-06-01 A | 100% |
| 45 | 1.1.3.3.3 | Elaborar Plantilla de Informe General de QA | manual | 1d | 2016-06-01 A | 2016-06-01 A | 100% |
| 46 | 1.1.3.3.4 | Elaborar Formato de Solicitud de Control de Calidad del Producto | manual | 1d | 2016-06-01 A | 2016-06-01 A | 100% |
| 47 | 1.1.3.3.5 | Elaborar documento de Proceso de Aseguramiento de la calidad | manual | 2d | 2016-06-02 A | 2016-06-03 A | 100% |
| 48 | 1.1.3.3.6 | Traspaso de Información | manual | 1d | 2016-06-04 A | 2016-06-04 A | 100% |
| 49 | 1.1.3.4 | **Desarrollo de Área de Proceso MA** |  | 2.88d | 2016-06-16 A | 2016-06-20 A | 100% |
| 50 | 1.1.3.4.1 | Elaborar Formato de Ficha de Métricas de Numero de N Conformidades de Producto | manual | 1d | 2016-06-16 A | 2016-06-16 A | 100% |
| 51 | 1.1.3.4.2 | Elaborar Formato de Ficha de Métricas de Índice de Cambios de Ítems de Configuración | manual | 1d | 2016-06-16 A | 2016-06-16 A | 100% |
| 52 | 1.1.3.4.3 | Elaborar Formato de Ficha de Métricas de Volatilidad de Requerimientos | manual | 1d | 2016-06-16 A | 2016-06-16 A | 100% |
| 53 | 1.1.3.4.4 | Elaborar Formato de Ficha de Métricas de Exposición al Riesgo | manual | 1d | 2016-06-16 A | 2016-06-16 A | 100% |
| 54 | 1.1.3.4.5 | Elaborar Formato de Tablero de Métricas | manual | 1d | 2016-06-16 A | 2016-06-16 A | 100% |
| 55 | 1.1.3.4.6 | Elaborar Documento de Proceso de Medicion de Métricas | manual | 2d | 2016-06-17 A | 2016-06-20 A | 100% |
| 56 | 1.1.3.4.7 | Traspaso de Información | manual | 1d | 2016-06-20 A | 2016-06-20 A | 100% |

| ID | WBS | Task | Type | Duration | Start | Finish | Complete | Remaining | Total slack |
| --- | --- | --- | --- | --- | --- | --- | --- | --- | --- |
| 57 | 1.1.3.5 | **Desarrollo del Área de Proceso CM** |  | 2d | 2016-06-16 A | 2016-06-18 A | 100% |  |  |
| 58 | 1.1.3.5.1 | Elaborar Formato de Registro de Ítems de Configuración | manual | 1d | 2016-06-16 A | 2016-06-16 A | 100% |  |  |
| 59 | 1.1.3.5.2 | Elaborar Formato de Solicitud de Accesos | manual | 1d | 2016-06-16 A | 2016-06-16 A | 100% |  |  |
| 60 | 1.1.3.5.3 | Elaborar Documento de Proceso de Gestión de Configuración | manual | 1d | 2016-06-17 A | 2016-06-17 A | 100% |  |  |
| 61 | 1.1.3.5.4 | Traspaso de Información | manual | 1d | 2016-06-18 A | 2016-06-18 A | 100% |  |  |
| 62 | 1.1.4 | **Cierre** |  | 1d | 2016-07-19 | 2016-07-19 |  |  |  |
| 63 | 1.1.4.1 | **Cierre de Proyecto** |  | 1d | 2016-07-19 | 2016-07-19 |  |  |  |
| 64 | 1.1.4.1.1 | Revisión de Entregables del Proyecto | manual | 1d | 2016-07-19 | 2016-07-19 |  |  |  |
| 65 | 1.1.4.1.2 | Elaboración del Acta de Aceptación y Cierre del Proyecto | manual | 1d | 2016-07-19 | 2016-07-19 |  |  |  |
| 66 | 1.1.4.1.3 | Traspaso de Información | manual | 1d | 2016-07-19 | 2016-07-19 |  |  |  |
| 67 | 1.1.4.2 | **Relatorio de Proyecto** |  | 1d | 2016-07-19 | 2016-07-19 |  |  |  |
| 68 | 1.1.4.2.1 | Elaborar Relatorio de Proyecto | manual | 1d | 2016-07-19 | 2016-07-19 |  |  |  |
| 69 | 1.1.4.2.2 | Revisión y ajustes de Relatorio por el equipo del Proyecto | manual | 1d | 2016-07-19 | 2016-07-19 |  |  |  |
| 70 | 1.1.4.2.3 | Revisión de Relatorio | manual | 1d | 2016-07-19 | 2016-07-19 |  |  |  |
| 71 | 1.1.4.2.4 | Traspaso de Información | manual | 1d | 2016-07-19 | 2016-07-19 |  |  |  |
| 72 | 1.2 | **Ingeniería: REQM** |  | 35.88d | 2016-05-21 A | 2016-07-11 | 71% | 10.46d | 0d |
| 73 | 1.2.1 | **Software BIO ASSITENS** |  | 35.88d | 2016-05-21 A | 2016-07-11 | 71% | 10.46d | 0d |
| 74 | 1.2.1.1 | **Requerimientos** |  | 9.88d | 2016-05-21 A | 2016-06-03 A | 100% |  |  |
| 75 | 1.2.1.1.1 | Desarrollar Plan de Proyecto | manual | 1d | 2016-05-21 A | 2016-05-21 A | 100% |  |  |
| 76 | 1.2.1.1.2 | Elaborar Matriz de Trazabilidad de Requerimientos | manual | 1d | 2016-06-02 A | 2016-06-02 A | 100% |  |  |
| 77 | 1.2.1.1.3 | Elaborar Lista Maestra de Requerimientos | manual | 1d | 2016-06-02 A | 2016-06-02 A | 100% |  |  |
| 78 | 1.2.1.1.4 | Traspaso de Información | manual | 1d | 2016-06-03 A | 2016-06-03 A | 100% |  |  |
| 79 | 1.2.1.2 | **Análisis** |  | 3.88d | 2016-06-04 A | 2016-06-09 A | 100% |  |  |
| 80 | 1.2.1.2.1 | Revisión de Matriz de Trazabilidad de Requerimientos | manual | 1d | 2016-06-04 A | 2016-06-04 A | 100% |  |  |
| 81 | 1.2.1.2.2 | Elaborar Documento de Análisis | manual | 2d | 2016-06-06 A | 2016-06-07 A | 100% |  |  |
| 82 | 1.2.1.2.3 | Actualizar Matriz de Trazabilidad de Requerimientos | manual | 1d | 2016-06-08 A | 2016-06-08 A | 100% |  |  |
| 83 | 1.2.1.2.4 | Traspaso de Información | manual | 1d | 2016-06-09 A | 2016-06-09 A | 100% |  |  |

| ID | WBS | Task | Type | Duration | Start | Finish | Complete | Constraint |
| --- | --- | --- | --- | --- | --- | --- | --- | --- |
| 84 | 1.2.1.3 | **Diseño** |  | 1d | 2016-06-10 A | 2016-06-11 A | 100% |  |
| 85 | 1.2.1.3.1 | Elaborar Documento de Diseño | manual | 1d | 2016-06-10 A | 2016-06-10 A | 100% |  |
| 86 | 1.2.1.3.2 | Actualizar Matriz de Trazabilidad de Requerimientos | manual | 1d | 2016-06-10 A | 2016-06-10 A | 100% |  |
| 87 | 1.2.1.3.3 | Traspaso de Información | manual | 1d | 2016-06-11 A | 2016-06-11 A | 100% |  |
| 88 | 1.2.1.4 | **Construcción** |  | 12.88d | 2016-06-03 A | 2016-06-21 A | 100% |  |
| 89 | 1.2.1.4.1 | **Modulo Administrativo** |  | 4.88d | 2016-06-03 A | 2016-06-09 A | 100% |  |
| 90 | 1.2.1.4.1.1 | **Configuración** |  | 4.88d | 2016-06-03 A | 2016-06-09 A | 100% |  |
| 91 | 1.2.1.4.1.1.1 | Registro de Empresas y Agencias | manual | 1d | 2016-06-03 A | 2016-06-03 A | 100% |  |
| 92 | 1.2.1.4.1.1.2 | Registro de dias no Laborables | manual | 1d | 2016-06-04 A | 2016-06-04 A | 100% |  |
| 93 | 1.2.1.4.1.1.3 | Registro de Horarios de Trabajo | manual | 1d | 2016-06-06 A | 2016-06-06 A | 100% |  |
| 94 | 1.2.1.4.1.1.4 | Registro de Dispositivos | manual | 1d | 2016-06-07 A | 2016-06-07 A | 100% |  |
| 95 | 1.2.1.4.1.1.5 | Registro de Empleados | manual | 1d | 2016-06-08 A | 2016-06-08 A | 100% |  |
| 96 | 1.2.1.4.1.1.6 | Registro de Horarios de Empleados | manual | 1d | 2016-06-09 A | 2016-06-09 A | 100% |  |
| 97 | 1.2.1.4.2 | **Módulo de Operaciones** |  | 3.88d | 2016-06-10 A | 2016-06-15 A | 100% |  |
| 98 | 1.2.1.4.2.1 | Carga de Empleados |  | 1d | 2016-06-10 A | 2016-06-10 A | 100% | start no earlier than 2016-06-10 |
| 99 | 1.2.1.4.2.2 | Registro de Huellas | manual | 1d | 2016-06-11 A | 2016-06-11 A | 100% |  |
| 100 | 1.2.1.4.2.3 | Descargar Huellas (Backup) | manual | 1d | 2016-06-13 A | 2016-06-13 A | 100% |  |
| 101 | 1.2.1.4.2.4 | Registro de Mensajes (SMS) | manual | 1d | 2016-06-14 A | 2016-06-14 A | 100% |  |
| 102 | 1.2.1.4.2.5 | Proceso Manual de Marcaciones | manual | 1d | 2016-06-15 A | 2016-06-15 A | 100% |  |
| 103 | 1.2.1.4.3 | **Módulo de Reportes** |  | 1.88d | 2016-06-16 A | 2016-06-17 A | 100% |  |
| 104 | 1.2.1.4.3.1 | Reporte general de Marcaciones |  | 1d | 2016-06-16 A | 2016-06-16 A | 100% | start no earlier than 2016-06-16 |
| 105 | 1.2.1.4.3.2 | Reporte de Asistencias | manual | 1d | 2016-06-17 A | 2016-06-17 A | 100% |  |
| 106 | 1.2.1.4.4 | **Módulo de Seguridad** |  | 0.88d | 2016-06-18 A | 2016-06-20 A | 100% |  |
| 107 | 1.2.1.4.4.1 | Permisos y Accesos | manual | 1d | 2016-06-18 A | 2016-06-18 A | 100% |  |
| 108 | 1.2.1.4.4.2 | Backup | manual | 1d | 2016-06-20 A | 2016-06-20 A | 100% |  |
| 109 | 1.2.1.4.5 | Actualizar Matriz de Trazabilidad de Requerimientos | manual | 1d | 2016-06-21 A | 2016-06-21 A | 100% |  |
| 110 | 1.2.1.4.6 | Traspaso de Información | manual | 1d | 2016-06-21 A | 2016-06-21 A | 100% |  |

| ID | WBS | Task | Type | Duration | Start | Finish | Complete | Total slack |
| --- | --- | --- | --- | --- | --- | --- | --- | --- |
| 111 | 1.2.1.5 | **Pruebas** |  | 4.88d | 2016-07-01 | 2016-07-07 |  | 0d |
| 112 | 1.2.1.5.1 | **Pruebas Funcionales** |  | 2.88d | 2016-07-01 | 2016-07-05 |  | 0d |
| 113 | 1.2.1.5.1.1 | **Modulo Administrativo** |  | 0.88d | 2016-07-01 | 2016-07-01 |  | 0d |
| 114 | 1.2.1.5.1.1.1 | Elaborar Pruebas de Modulo | manual | 1d | 2016-07-01 | 2016-07-01 |  |  |
| 115 | 1.2.1.5.1.1.2 | Elaborar Informe de Prueba | manual | 1d | 2016-07-01 | 2016-07-01 |  |  |
| 116 | 1.2.1.5.1.1.3 | Traspaso de Información | manual | 1d | 2016-07-01 | 2016-07-01 |  |  |
| 117 | 1.2.1.5.1.2 | **Modulo de Operaciones** |  | 0d | 2016-07-02 | 2016-07-02 |  | 0d |
| 118 | 1.2.1.5.1.2.1 | Elaborar Pruebas de Modulo | manual | 1d | 2016-07-02 | 2016-07-02 |  |  |
| 119 | 1.2.1.5.1.2.2 | Elaborar Informe de Prueba | manual | 1d | 2016-07-02 | 2016-07-02 |  |  |
| 120 | 1.2.1.5.1.2.3 | Traspaso de Información | manual | 1d | 2016-07-02 | 2016-07-02 |  |  |
| 121 | 1.2.1.5.1.3 | **Modulo de Reportes** |  | 0.88d | 2016-07-04 | 2016-07-04 |  | 0d |
| 122 | 1.2.1.5.1.3.1 | Elaborar Pruebas de Modulo | manual | 1d | 2016-07-04 | 2016-07-04 |  |  |
| 123 | 1.2.1.5.1.3.2 | Elaborar Informe de Prueba | manual | 1d | 2016-07-04 | 2016-07-04 |  |  |
| 124 | 1.2.1.5.1.3.3 | Traspaso de Información | manual | 1d | 2016-07-04 | 2016-07-04 |  |  |
| 125 | 1.2.1.5.1.4 | **Modulo de Seguridad** |  | 0.88d | 2016-07-05 | 2016-07-05 |  | 0d |
| 126 | 1.2.1.5.1.4.1 | Elaborar Pruebas de Modulo | manual | 1d | 2016-07-05 | 2016-07-05 |  |  |
| 127 | 1.2.1.5.1.4.2 | Elaborar Informe de Prueba | manual | 1d | 2016-07-05 | 2016-07-05 |  |  |
| 128 | 1.2.1.5.1.4.3 | Traspaso de Información | manual | 1d | 2016-07-05 | 2016-07-05 |  |  |
| 129 | 1.2.1.5.2 | **Pruebas Externas** |  | 0.88d | 2016-07-07 | 2016-07-07 |  | 0d |
| 130 | 1.2.1.5.2.1 | Elaborar Matriz de Trazabilidad de Requerimientos Final | manual | 1d | 2016-07-07 | 2016-07-07 |  |  |
| 131 | 1.2.1.5.2.2 | Traspaso de Información | manual | 1d | 2016-07-07 | 2016-07-07 |  |  |
| 132 | 1.2.1.6 | **Implementación** |  | 1.88d | 2016-07-08 A | 2016-07-11 A | 100% |  |
| 133 | 1.2.1.6.1 | **Guía de Usuario** |  | 1d | 2016-07-08 A | 2016-07-09 A | 100% |  |
| 134 | 1.2.1.6.1.1 | Elaborar Guía de publicación de la Web | manual | 1d | 2016-07-08 A | 2016-07-08 A | 100% |  |
| 135 | 1.2.1.6.1.2 | Elaborar Manual de Usuario con todos los módulos actualizados | manual | 1d | 2016-07-08 A | 2016-07-08 A | 100% |  |
| 136 | 1.2.1.6.1.3 | Traspaso de Información | manual | 1d | 2016-07-09 A | 2016-07-09 A | 100% |  |

| ID | WBS | Task | Type | Duration | Start | Finish | Complete | Remaining | Total slack |
| --- | --- | --- | --- | --- | --- | --- | --- | --- | --- |
| 137 | 1.2.1.6.2 | **Preparación del Servidor IIS** |  | 0.88d | 2016-07-11 A | 2016-07-11 A | 100% |  |  |
| 138 | 1.2.1.6.2.1 | Creación del Servidor IIS | manual | 1d | 2016-07-11 A | 2016-07-11 A | 100% |  |  |
| 139 | 1.2.1.6.2.2 | Publicación en la IIS | manual | 1d | 2016-07-11 A | 2016-07-11 A | 100% |  |  |
| 140 | 1.3 | **Inducción del Personal** |  | 8d | 2016-05-05 A | 2016-05-16 A | 100% |  |  |
| 141 | 1.3.1 | Establecer Personal para Inducción | manual | 1d | 2016-05-05 A | 2016-05-05 A | 100% |  |  |
| 142 | 1.3.2 | Realizar Inducción al Personal | manual | 5d | 2016-05-06 A | 2016-05-12 A | 100% |  |  |
| 143 | 1.3.3 | Verificar Proceso de Inducción | manual | 1d | 2016-05-13 A | 2016-05-13 A | 100% |  |  |
| 144 | 1.3.4 | Elaborar Certificado de Inducción de Personal | manual | 1d | 2016-05-13 A | 2016-05-13 A | 100% |  |  |
| 145 | 1.3.5 | Traspaso de Información | manual | 1d | 2016-05-13 A | 2016-05-13 A | 100% |  |  |
| 146 | 1.3.6 | Pasar a área de Desarrollo a Personal Capacitado | manual | 1d | 2016-05-16 A | 2016-05-16 A | 100% |  |  |
| 147 | 1.4 | **Soporte: PPQA** |  | 45d? | 2016-05-16 A | 2016-07-16 | 70% | 13.54d? | 0d |
| 148 | 1.4.1 | **Primera Revisión** |  | 12.88d | 2016-05-16 A | 2016-06-01 A | 100% |  |  |
| 149 | 1.4.1.1 | Elaborar Herramienta de Gestion de Aseguramiento de la Calidad | manual | 13d | 2016-05-16 A | 2016-06-01 A | 100% |  |  |
| 150 | 1.4.1.2 | Elaborar CheckList de Aseguramiento de la Calidad | manual | 13d | 2016-05-16 A | 2016-06-01 A | 100% |  |  |
| 151 | 1.4.1.3 | Traspaso de Información | manual | 1d | 2016-06-01 A | 2016-06-01 A | 100% |  |  |
| 152 | 1.4.2 | **Segunda Revisión** |  | 12.88d | 2016-06-13 A | 2016-06-29 A | 100% |  |  |
| 153 | 1.4.2.1 | Elaborar Herramienta de Gestion de Aseguramiento de la Calidad | manual | 13d | 2016-06-13 A | 2016-06-29 A | 100% |  |  |
| 154 | 1.4.2.2 | Actualizar CheckList de Aseguramiento de la Calidad | manual | 13d | 2016-06-13 A | 2016-06-29 A | 100% |  |  |
| 155 | 1.4.2.3 | Traspaso de Información | manual | 1d | 2016-06-29 A | 2016-06-29 A | 100% |  |  |
| 156 | 1.4.3 | **Tercera Revisión** |  | 10d? | 2016-07-04 | 2016-07-16 |  |  | 0d |
| 157 | 1.4.3.1 | Elaborar Matriz de Seguimiento del Proyecto | manual | 11.12d | 2016-07-04 | 2016-07-16 |  |  |  |
| 158 | 1.4.3.2 | Elaborar Informe de Revisión General del QA | manual | 11.12d? | 2016-07-04 | 2016-07-16 |  |  |  |
| 159 | 1.4.3.3 | Traspaso de Información | manual | 1d | 2016-07-16 | 2016-07-16 |  |  |  |
| 160 | 1.5 | **Reuniones Internas DEV-SOFT** |  | 45d | 2016-05-14 A | 2016-07-16 | 80% | 9d | 0d |
| 161 | 1.5.1 | Kick Off Meeting 1 | manual | 1d | 2016-05-21 A | 2016-05-21 A | 100% |  |  |
| 162 | 1.5.2 | Kick Off Meeting 2 | manual | 1d | 2016-06-18 A | 2016-06-18 A | 100% |  |  |
| 163 | 1.5.3 | Kick Off Meeting 3 | manual | 1d | 2016-07-16 | 2016-07-16 |  |  |  |

| ID | WBS | Task | Type | Duration | Start | Finish | Complete | Remaining | Total slack |
| --- | --- | --- | --- | --- | --- | --- | --- | --- | --- |
| 164 | 1.5.4 | **Reunión Quincenal 1** |  | 1d | 2016-05-14 A | 2016-05-14 A | 100% |  |  |
| 165 | 1.5.4.1 | Elaborar Acta de Reunión | manual | 1d | 2016-05-14 A | 2016-05-14 A | 100% |  |  |
| 166 | 1.5.4.2 | Traspaso de Información | manual | 1d | 2016-05-14 A | 2016-05-14 A | 100% |  |  |
| 167 | 1.5.5 | **Reunión Quincenal 2** |  | 1d | 2016-05-28 A | 2016-05-28 A | 100% |  |  |
| 168 | 1.5.5.1 | Elaborar Acta de Reunión | manual | 1d | 2016-05-28 A | 2016-05-28 A | 100% |  |  |
| 169 | 1.5.5.2 | Traspaso de Información | manual | 1d | 2016-05-28 A | 2016-05-28 A | 100% |  |  |
| 170 | 1.5.6 | **Reunión Quincenal 3** |  | 1d | 2016-06-11 A | 2016-06-11 A | 100% |  |  |
| 171 | 1.5.6.1 | Elaborar Acta de Reunión | manual | 1d | 2016-06-11 A | 2016-06-11 A | 100% |  |  |
| 172 | 1.5.6.2 | Traspaso de Información | manual | 1d | 2016-06-11 A | 2016-06-11 A | 100% |  |  |
| 173 | 1.5.7 | **Reunión Quincenal 4** |  | 1d | 2016-06-25 A | 2016-06-25 A | 100% |  |  |
| 174 | 1.5.7.1 | Elaborar Acta de Reunión | manual | 1d | 2016-06-25 A | 2016-06-25 A | 100% |  |  |
| 175 | 1.5.7.2 | Traspaso de Información | manual | 1d | 2016-06-25 A | 2016-06-25 A | 100% |  |  |
| 176 | 1.5.8 | **Reunión Quincenal 5** |  | 1d | 2016-07-09 A | 2016-07-09 A | 100% |  |  |
| 177 | 1.5.8.1 | Elaborar Acta de Reunión | manual | 1d | 2016-07-09 A | 2016-07-09 A | 100% |  |  |
| 178 | 1.5.8.2 | Traspaso de Información | manual | 1d | 2016-07-09 A | 2016-07-09 A | 100% |  |  |
| 179 | 1.5.9 | **Reunión Final** |  | 1d | 2016-07-16 | 2016-07-16 |  |  |  |
| 180 | 1.5.9.1 | Elaborar Acta de Reunión | manual | 1d | 2016-07-16 | 2016-07-16 |  |  |  |
| 181 | 1.5.9.2 | Traspaso de Información | manual | 1d | 2016-07-16 | 2016-07-16 |  |  |  |
| 182 | 1.6 | **Reuniones Externas DEV SOFT - CLIENTE** |  | 40.88d | 2016-05-23 A | 2016-07-18 | 67% | 13.62d | 0d |
| 183 | 1.6.1 | **Primera Presentación del Proyecto** |  | 1d | 2016-05-23 A | 2016-05-23 A | 100% |  |  |
| 184 | 1.6.1.1 | Reunión Externa con PDS EIRL | manual | 1d | 2016-05-23 A | 2016-05-23 A | 100% |  |  |
| 185 | 1.6.1.2 | Acta de Reunión con Acuerdos Tomados | manual | 1d | 2016-05-23 A | 2016-05-23 A | 100% |  |  |
| 186 | 1.6.1.3 | Traspaso de Información | manual | 1d | 2016-05-23 A | 2016-05-23 A | 100% |  |  |
| 187 | 1.6.2 | **Segunda Presentación del Proyecto** |  | 1d | 2016-06-20 A | 2016-06-20 A | 100% |  |  |
| 188 | 1.6.2.1 | Reunión Externa con PDS EIRL | manual | 1d | 2016-06-20 A | 2016-06-20 A | 100% |  |  |
| 189 | 1.6.2.2 | Acta de Reunión con Acuerdos Tomados | manual | 1d | 2016-06-20 A | 2016-06-20 A | 100% |  |  |
| 190 | 1.6.2.3 | Traspaso de Información | manual | 1d | 2016-06-20 A | 2016-06-20 A | 100% |  |  |

| ID | WBS | Task | Type | Duration | Start | Finish | Total slack |
| --- | --- | --- | --- | --- | --- | --- | --- |
| 191 | 1.6.3 | **Tercera Presentación del Proyecto** |  | 0.88d | 2016-07-18 | 2016-07-18 | 0d |
| 192 | 1.6.3.1 | Kick Off Meeting con Profesor | manual | 1d | 2016-07-18 | 2016-07-18 |  |
| 193 | 1.6.3.2 | Acta de Reunión con acuerdos tomados | manual | 1d | 2016-07-18 | 2016-07-18 |  |
| 194 | 1.6.3.3 | Traspaso de Información | manual | 1d | 2016-07-18 | 2016-07-18 |  |
